# plan_ui_design

Schedule from MS Project, 2015-08-03 to 2015-10-16.

## Calendars

- Standard: Mon-Fri 08:00-12:00, 13:00-17:00; Sat-Sun off.

## Resources

| Resource |
| --- |
| NDQ |
| Viettel |

## Schedule

| ID | WBS | Task | Duration | Start | Finish | Predecessors | Total slack | Free slack | Constraint | Resources | Work |
| --- | --- | --- | --- | --- | --- | --- | --- | --- | --- | --- | --- |
| 1 | 1 | **UI design** | 55d | 2015-08-03 08:00 | 2015-10-16 17:00 |  | 0d |  |  |  | 544h |
| 2 | 1.1 | **Design main page** | 6d | 2015-08-03 08:00 | 2015-08-10 17:00 |  | 49d |  |  |  | 48h |
| 3 | 1.1.1 | Option 1 | 3d | 2015-08-03 08:00 | 2015-08-05 17:00 |  | 21d | 0d |  | NDQ | 24h |
| 4 | 1.1.2 | Option 2 | 3d | 2015-08-06 08:00 | 2015-08-10 17:00 | 3 | 21d |  |  | NDQ | 24h |
| 5 | 1.2 | **Review design** | 3d | 2015-08-10 08:00 | 2015-08-12 17:00 |  | 0d |  |  |  | 48h |
| 6 | 1.2.1 | Meetting | 1d | 2015-08-10 08:00 | 2015-08-10 17:00 |  | 21d |  | start no earlier than 2015-08-10 08:00 | Viettel | 8h |
| 7 | 1.2.2 | Select design | 2d | 2015-08-10 08:00 | 2015-08-11 17:00 |  | 20d |  | start no earlier than 2015-08-10 08:00 | Viettel | 16h |
| 8 | 1.2.3 | Comment design | 3d | 2015-08-10 08:00 | 2015-08-12 17:00 |  | 0d |  | start no earlier than 2015-08-10 08:00 | Viettel | 24h |
| 9 | 1.3 | **Redesign main page** | 8d | 2015-08-13 08:00 | 2015-08-24 17:00 |  | 0d |  |  |  | 64h |
| 10 | 1.3.1 | Design main page follow comment | 3d | 2015-08-13 08:00 | 2015-08-17 17:00 | 8 | 0d |  | start no earlier than 2015-08-13 08:00 | NDQ | 24h |
| 11 | 1.3.2 | Sent design for review | 1d | 2015-08-18 08:00 | 2015-08-18 17:00 | 10 | 0d |  | start no earlier than 2015-08-18 08:00 | NDQ | 8h |
| 12 | 1.3.3 | Comment design | 1d | 2015-08-19 08:00 | 2015-08-19 17:00 | 11 | 0d |  | start no earlier than 2015-08-19 08:00 | Viettel | 8h |
| 13 | 1.3.4 | Final design main page(out jpg) | 1d | 2015-08-20 08:00 | 2015-08-20 17:00 | 12 | 0d |  | start no earlier than 2015-08-20 08:00 | NDQ | 8h |
| 14 | 1.3.5 | Cut htmt and buid css, js(out html) | 2d | 2015-08-21 08:00 | 2015-08-24 17:00 | 13 | 11d |  | start no earlier than 2015-08-21 08:00 | NDQ | 16h |
| 15 | 1.4 | **Design login page** | 5d | 2015-08-21 08:00 | 2015-08-27 17:00 | 13 | 0d |  |  |  | 32h |
| 16 | 1.4.1 | Design login page | 2d | 2015-08-21 08:00 | 2015-08-24 17:00 | 13 | 0d |  | start no earlier than 2015-08-21 08:00 | NDQ | 16h |
| 17 | 1.4.2 | Sent design for review | 0.5d | 2015-08-25 08:00 | 2015-08-25 12:00 | 16 | 0d |  | start no earlier than 2015-08-25 08:00 | NDQ | 4h |
| 18 | 1.4.3 | comment design | 0.5d | 2015-08-25 13:00 | 2015-08-25 17:00 | 17 | 0d |  | start no earlier than 2015-08-25 13:00 | Viettel | 4h |
| 19 | 1.4.4 | redesign login page(out jpg) | 1d | 2015-08-26 08:00 | 2015-08-26 17:00 | 18 | 0d |  | start no earlier than 2015-08-26 08:00 | NDQ | 8h |
| 20 | 1.4.5 | Cut htmt and buid css, js(out html) | 1d | 2015-08-27 08:00 | 2015-08-27 17:00 | 19 | 8d |  | start no earlier than 2015-08-27 08:00 |  |  |
| 21 | 1.5 | **Design user registration page** | 5d | 2015-08-27 08:00 | 2015-09-02 17:00 | 19 | 0d |  |  |  | 40h |
| 22 | 1.5.1 | Design user registration page | 2d | 2015-08-27 08:00 | 2015-08-28 17:00 | 19 | 0d |  | start no earlier than 2015-08-27 08:00 | NDQ | 16h |
| 23 | 1.5.2 | Sent design for review | 0.5d | 2015-08-31 08:00 | 2015-08-31 12:00 | 22 | 0d |  | start no earlier than 2015-08-31 08:00 | NDQ | 4h |
| 24 | 1.5.3 | comment design | 0.5d | 2015-08-31 13:00 | 2015-08-31 17:00 | 23 | 0d |  | start no earlier than 2015-08-31 13:00 | Viettel | 4h |
| 25 | 1.5.4 | redesign registration page(out jpg) | 1d | 2015-09-01 08:00 | 2015-09-01 17:00 | 24 | 0d |  | start no earlier than 2015-09-01 08:00 | NDQ | 8h |
| 26 | 1.5.5 | Cut htmt and buid css, js(out html) | 1d | 2015-09-02 08:00 | 2015-09-02 17:00 | 25 | 4d |  | start no earlier than 2015-09-02 08:00 | NDQ | 8h |

| ID | WBS | Task | Duration | Start | Finish | Predecessors | Total slack | Resources | Work |
| --- | --- | --- | --- | --- | --- | --- | --- | --- | --- |
| 27 | 1.6 | **Design channel page** | 5d | 2015-09-02 08:00 | 2015-09-08 17:00 | 25 | 0d |  | 40h |
| 28 | 1.6.1 | Design channel page | 2d | 2015-09-02 08:00 | 2015-09-03 17:00 | 25 | 0d | NDQ | 16h |
| 29 | 1.6.2 | sent design for review | 0.5d | 2015-09-04 08:00 | 2015-09-04 12:00 | 28 | 0d | NDQ | 4h |
| 30 | 1.6.3 | comment design | 0.5d | 2015-09-04 13:00 | 2015-09-04 17:00 | 29 | 0d | Viettel | 4h |
| 31 | 1.6.4 | redesign channel page(out jpg) | 1d | 2015-09-07 08:00 | 2015-09-07 17:00 | 30 | 0d | NDQ | 8h |
| 32 | 1.6.5 | Cut htmt and buid css, js(out html) | 1d | 2015-09-08 08:00 | 2015-09-08 17:00 | 31 | 8d | NDQ | 8h |
| 33 | 1.7 | **Design detail for channel page** | 5d | 2015-09-08 08:00 | 2015-09-14 17:00 | 31 | 0d |  | 40h |
| 34 | 1.7.1 | Design detail for channel page | 2d | 2015-09-08 08:00 | 2015-09-09 17:00 | 31 | 0d | NDQ | 16h |
| 35 | 1.7.2 | Sent design for review | 0.5d | 2015-09-10 08:00 | 2015-09-10 12:00 | 34 | 0d | NDQ | 4h |
| 36 | 1.7.3 | Comment design | 0.5d | 2015-09-10 13:00 | 2015-09-10 17:00 | 35 | 0d | Viettel | 4h |
| 37 | 1.7.4 | Redesign detail for channel page(out jpg) | 1d | 2015-09-11 08:00 | 2015-09-11 17:00 | 36 | 0d | NDQ | 8h |
| 38 | 1.7.5 | Cut htmt and buid css, js(out html) | 1d | 2015-09-14 08:00 | 2015-09-14 17:00 | 37 | 8d | NDQ | 8h |
| 39 | 1.8 | **Design play movie & channel** | 5d | 2015-09-14 08:00 | 2015-09-18 17:00 | 37 | 0d |  | 40h |
| 40 | 1.8.1 | Design play movie & channel | 2d | 2015-09-14 08:00 | 2015-09-15 17:00 | 37 | 0d | NDQ | 16h |
| 41 | 1.8.2 | Sent design for review | 0.5d | 2015-09-16 08:00 | 2015-09-16 12:00 | 40 | 0d | NDQ | 4h |
| 42 | 1.8.3 | Comment design | 0.5d | 2015-09-16 13:00 | 2015-09-16 17:00 | 41 | 0d | Viettel | 4h |
| 43 | 1.8.4 | Redesign play movie & channel(out jpg) | 1d | 2015-09-17 08:00 | 2015-09-17 17:00 | 42 | 0d | NDQ | 8h |
| 44 | 1.8.5 | Cut htmt and buid css, js(out html) | 1d | 2015-09-18 08:00 | 2015-09-18 17:00 | 43 | 14d | NDQ | 8h |
| 45 | 1.9 | **Design search and rerult page** | 5d | 2015-09-18 08:00 | 2015-09-24 17:00 | 43 | 0d |  | 40h |
| 46 | 1.9.1 | Design search and rerult page | 2d | 2015-09-18 08:00 | 2015-09-21 17:00 | 43 | 0d | NDQ | 16h |
| 47 | 1.9.2 | Sent design for review | 0.5d | 2015-09-22 08:00 | 2015-09-22 12:00 | 46 | 0d | NDQ | 4h |
| 48 | 1.9.3 | comment design | 0.5d | 2015-09-22 13:00 | 2015-09-22 17:00 | 47 | 0d | Viettel | 4h |
| 49 | 1.9.4 | Redesign search and result page(out jpg) | 1d | 2015-09-23 08:00 | 2015-09-23 17:00 | 48 | 0d | NDQ | 8h |
| 50 | 1.9.5 | Cut htmt and buid css, js(out html) | 1d | 2015-09-24 08:00 | 2015-09-24 17:00 | 49 | 16d | NDQ | 8h |

| ID | WBS | Task | Duration | Start | Finish | Predecessors | Total slack | Resources | Work |
| --- | --- | --- | --- | --- | --- | --- | --- | --- | --- |
| 51 | 1.10 | **Design payment page** | 6d | 2015-09-24 08:00 | 2015-10-01 17:00 | 49 | 0d |  | 48h |
| 52 | 1.10.1 | Design payment page | 3d | 2015-09-24 08:00 | 2015-09-28 17:00 | 49 | 0d | NDQ | 24h |
| 53 | 1.10.2 | sent design for review | 0.5d | 2015-09-29 08:00 | 2015-09-29 12:00 | 52 | 0d | NDQ | 4h |
| 54 | 1.10.3 | comment design | 0.5d | 2015-09-29 13:00 | 2015-09-29 17:00 | 53 | 0d | Viettel | 4h |
| 55 | 1.10.4 | Redesign payment page(out jpg) | 1d | 2015-09-30 08:00 | 2015-09-30 17:00 | 54 | 0d | NDQ | 8h |
| 56 | 1.10.5 | Cut htmt and buid css, js(out html) | 1d | 2015-10-01 08:00 | 2015-10-01 17:00 | 55 | 11d | NDQ | 8h |
| 57 | 1.11 | **Design VOD** | 6d | 2015-10-01 08:00 | 2015-10-08 17:00 | 55 | 0d |  | 48h |
| 58 | 1.11.1 | Design VOD | 3d | 2015-10-01 08:00 | 2015-10-05 17:00 | 55 | 0d | NDQ | 24h |
| 59 | 1.11.2 | Sent design for review | 0.5d | 2015-10-06 08:00 | 2015-10-06 12:00 | 58 | 0d | NDQ | 4h |
| 60 | 1.11.3 | Comment design | 0.5d | 2015-10-06 13:00 | 2015-10-06 17:00 | 59 | 0d | Viettel | 4h |
| 61 | 1.11.4 | Redesign VOD(out jpg) | 1d | 2015-10-07 08:00 | 2015-10-07 17:00 | 60 | 0d | NDQ | 8h |
| 62 | 1.11.5 | Cut htmt and buid css, js(out html) | 1d | 2015-10-08 08:00 | 2015-10-08 17:00 | 61 | 6d | NDQ | 8h |
| 63 | 1.12 | **Design User managerment page** | 5d | 2015-10-08 08:00 | 2015-10-14 17:00 | 61 | 0d |  | 40h |
| 64 | 1.12.1 | Design User managerment page | 2d | 2015-10-08 08:00 | 2015-10-09 17:00 | 61 | 0d | NDQ | 16h |
| 65 | 1.12.2 | Sent design for review | 0.5d | 2015-10-12 08:00 | 2015-10-12 12:00 | 64 | 0d | NDQ | 4h |
| 66 | 1.12.3 | Comment design | 0.5d | 2015-10-12 13:00 | 2015-10-12 17:00 | 65 | 0d | Viettel | 4h |
| 67 | 1.12.4 | Redesign user managerment page(out jpg) | 1d | 2015-10-13 08:00 | 2015-10-13 17:00 | 66 | 0d | NDQ | 8h |
| 68 | 1.12.5 | Cut htmt and buid css, js(out html) | 1d | 2015-10-14 08:00 | 2015-10-14 17:00 | 67 | 0d | NDQ | 8h |
| 69 | 1.13 | **Pack and hand over** | 2d | 2015-10-15 08:00 | 2015-10-16 17:00 | 68 | 0d |  | 16h |
| 70 | 1.13.1 | Pack all file in project | 1d | 2015-10-15 08:00 | 2015-10-15 17:00 | 68 | 0d | NDQ | 8h |
| 71 | 1.13.2 | Hand over project | 1d | 2015-10-16 08:00 | 2015-10-16 17:00 | 70 | 0d | NDQ | 8h |
