# plan_ui_design_ver1.1

Schedule from MS Project, 2015-08-03 to 2015-09-11.

## Calendars

- Standard: Mon-Fri 08:00-12:00, 13:00-17:00; Sat-Sun off.

## Resources

| Resource |
| --- |
| NDQ |
| Viettel |

## Schedule

| ID | WBS | Task | Duration | Start | Finish | Predecessors | Total slack | Free slack | Constraint | Resources | Work |
| --- | --- | --- | --- | --- | --- | --- | --- | --- | --- | --- | --- |
| 2 | 1 | **UI design** | 30d | 2015-08-03 08:00 | 2015-09-11 17:00 |  | 0d |  |  |  | 268h |
| 3 | 1.1 | **Design main page** | 4d | 2015-08-03 08:00 | 2015-08-06 17:00 |  | 0.5d |  |  |  | 32h |
| 4 | 1.1.1 | Option 1 | 2d | 2015-08-03 08:00 | 2015-08-04 17:00 |  | 2.5d | 0d |  | NDQ | 16h |
| 5 | 1.1.2 | Option 2 | 2d | 2015-08-05 08:00 | 2015-08-06 17:00 | 4 | 2.5d | 0d |  | NDQ | 16h |
| 6 | 1.2 | **Review design** | 2d | 2015-08-07 08:00 | 2015-08-10 17:00 | 5 | 0.5d |  |  |  | 16h |
| 7 | 1.2.1 | Meetting | 0.5d | 2015-08-07 08:00 | 2015-08-07 12:00 | 5 | 0.5d | 0d | start no earlier than 2015-08-06 08:00 | Viettel | 4h |
| 8 | 1.2.2 | Select design | 0.5d | 2015-08-07 13:00 | 2015-08-07 17:00 | 7 | 0.5d | 0d | start no earlier than 2015-08-07 08:00 | Viettel | 4h |
| 9 | 1.2.3 | Comment design | 1d | 2015-08-10 08:00 | 2015-08-10 17:00 | 8 | 0.5d | 0d | start no earlier than 2015-08-10 08:00 | Viettel | 8h |
| 10 | 1.3 | **Redesign main page** | 3d | 2015-08-11 08:00 | 2015-08-13 17:00 |  | 0.5d |  |  |  | 24h |
| 11 | 1.3.1 | Design main page follow comment | 1d | 2015-08-11 08:00 | 2015-08-11 17:00 | 9 | 0.5d | 0d | start no earlier than 2015-08-11 08:00 | NDQ | 8h |
| 12 | 1.3.2 | Sent design for review | 0.5d | 2015-08-12 08:00 | 2015-08-12 12:00 | 11 | 0.5d | 0d | start no earlier than 2015-08-12 08:00 | NDQ | 4h |
| 13 | 1.3.3 | Comment design | 0.5d | 2015-08-12 13:00 | 2015-08-12 17:00 | 12 | 0.5d | 0d | start no earlier than 2015-08-12 08:00 | Viettel | 4h |
| 14 | 1.3.4 | Final design main page(out jpg) | 0.5d | 2015-08-13 08:00 | 2015-08-13 12:00 | 13 | 0.5d | 0d | start no earlier than 2015-08-13 08:00 | NDQ | 4h |
| 15 | 1.3.5 | Cut htmt and buid css, js(out html) | 0.5d | 2015-08-13 13:00 | 2015-08-13 17:00 | 14 | 21d |  | start no earlier than 2015-08-13 08:00 | NDQ | 4h |
| 16 | 1.4 | **Design login page** | 2.5d | 2015-08-14 08:00 | 2015-08-18 12:00 | 14 | 0d |  |  |  | 16h |
| 17 | 1.4.1 | Design login page | 0.5d | 2015-08-14 08:00 | 2015-08-14 12:00 | 14 | 0d |  | start no earlier than 2015-08-14 08:00 | NDQ | 4h |
| 18 | 1.4.2 | Sent design for review | 0.5d | 2015-08-14 13:00 | 2015-08-14 17:00 | 17 | 0d |  | start no earlier than 2015-08-14 08:00 | NDQ | 4h |
| 19 | 1.4.3 | comment design | 0.5d | 2015-08-17 08:00 | 2015-08-17 12:00 | 18 | 0d |  | start no earlier than 2015-08-17 08:00 | Viettel | 4h |
| 20 | 1.4.4 | redesign login page(out jpg) | 0.5d | 2015-08-17 13:00 | 2015-08-17 17:00 | 19 | 0d |  | start no earlier than 2015-08-17 08:00 | NDQ | 4h |
| 21 | 1.4.5 | Cut htmt and buid css, js(out html) | 0.5d | 2015-08-18 08:00 | 2015-08-18 12:00 | 20 | 18.5d |  | start no earlier than 2015-08-18 08:00 |  |  |
| 22 | 1.5 | **Design user registration page** | 2.5d | 2015-08-18 08:00 | 2015-08-20 12:00 | 20 | 0d |  |  |  | 20h |
| 23 | 1.5.1 | Design user registration page | 0.5d | 2015-08-18 08:00 | 2015-08-18 12:00 | 20 | 0d |  | start no earlier than 2015-08-18 08:00 | NDQ | 4h |
| 24 | 1.5.2 | Sent design for review | 0.5d | 2015-08-18 13:00 | 2015-08-18 17:00 | 23 | 0d |  | start no earlier than 2015-08-18 08:00 | NDQ | 4h |
| 25 | 1.5.3 | comment design | 0.5d | 2015-08-19 08:00 | 2015-08-19 12:00 | 24 | 0d |  | start no earlier than 2015-08-19 08:00 | Viettel | 4h |
| 26 | 1.5.4 | redesign registration page(out jpg) | 0.5d | 2015-08-19 13:00 | 2015-08-19 17:00 | 25 | 0d |  | start no earlier than 2015-08-19 08:00 | NDQ | 4h |
| 27 | 1.5.5 | Cut htmt and buid css, js(out html) | 0.5d | 2015-08-20 08:00 | 2015-08-20 12:00 | 26 | 16.5d |  | start no earlier than 2015-08-20 08:00 | NDQ | 4h |

| ID | WBS | Task | Duration | Start | Finish | Predecessors | Total slack | Constraint | Resources | Work |
| --- | --- | --- | --- | --- | --- | --- | --- | --- | --- | --- |
| 28 | 1.6 | **Design channel page** | 2.5d | 2015-08-20 08:00 | 2015-08-24 12:00 | 26 | 0d |  |  | 20h |
| 29 | 1.6.1 | Design channel page | 0.5d | 2015-08-20 08:00 | 2015-08-20 12:00 | 26 | 0d | start no earlier than 2015-08-20 08:00 | NDQ | 4h |
| 30 | 1.6.2 | sent design for review | 0.5d | 2015-08-20 13:00 | 2015-08-20 17:00 | 29 | 0d |  | NDQ | 4h |
| 31 | 1.6.3 | comment design | 0.5d | 2015-08-21 08:00 | 2015-08-21 12:00 | 30 | 0d |  | Viettel | 4h |
| 32 | 1.6.4 | redesign channel page(out jpg) | 0.5d | 2015-08-21 13:00 | 2015-08-21 17:00 | 31 | 0d |  | NDQ | 4h |
| 33 | 1.6.5 | Cut htmt and buid css, js(out html) | 0.5d | 2015-08-24 08:00 | 2015-08-24 12:00 | 32 | 14.5d |  | NDQ | 4h |
| 34 | 1.7 | **Design detail for channel page** | 2.5d | 2015-08-24 08:00 | 2015-08-26 12:00 | 32 | 0d |  |  | 20h |
| 35 | 1.7.1 | Design detail for channel page | 0.5d | 2015-08-24 08:00 | 2015-08-24 12:00 | 32 | 0d |  | NDQ | 4h |
| 36 | 1.7.2 | Sent design for review | 0.5d | 2015-08-24 13:00 | 2015-08-24 17:00 | 35 | 0d |  | NDQ | 4h |
| 37 | 1.7.3 | Comment design | 0.5d | 2015-08-25 08:00 | 2015-08-25 12:00 | 36 | 0d |  | Viettel | 4h |
| 38 | 1.7.4 | Redesign detail for channel page(out jpg) | 0.5d | 2015-08-25 13:00 | 2015-08-25 17:00 | 37 | 0d |  | NDQ | 4h |
| 39 | 1.7.5 | Cut htmt and buid css, js(out html) | 0.5d | 2015-08-26 08:00 | 2015-08-26 12:00 | 38 | 12.5d |  | NDQ | 4h |
| 40 | 1.8 | **Design play movie & channel** | 2.5d | 2015-08-26 08:00 | 2015-08-28 12:00 | 38 | 0d |  |  | 20h |
| 41 | 1.8.1 | Design play movie & channel | 0.5d | 2015-08-26 08:00 | 2015-08-26 12:00 | 38 | 0d |  | NDQ | 4h |
| 42 | 1.8.2 | Sent design for review | 0.5d | 2015-08-26 13:00 | 2015-08-26 17:00 | 41 | 0d |  | NDQ | 4h |
| 43 | 1.8.3 | Comment design | 0.5d | 2015-08-27 08:00 | 2015-08-27 12:00 | 42 | 0d |  | Viettel | 4h |
| 44 | 1.8.4 | Redesign play movie & channel(out jpg) | 0.5d | 2015-08-27 13:00 | 2015-08-27 17:00 | 43 | 0d |  | NDQ | 4h |
| 45 | 1.8.5 | Cut htmt and buid css, js(out html) | 0.5d | 2015-08-28 08:00 | 2015-08-28 12:00 | 44 | 10.5d |  | NDQ | 4h |
| 46 | 1.9 | **Design search and rerult page** | 2.5d | 2015-08-28 08:00 | 2015-09-01 12:00 | 44 | 0d |  |  | 20h |
| 47 | 1.9.1 | Design search and rerult page | 0.5d | 2015-08-28 08:00 | 2015-08-28 12:00 | 44 | 0d |  | NDQ | 4h |
| 48 | 1.9.2 | Sent design for review | 0.5d | 2015-08-28 13:00 | 2015-08-28 17:00 | 47 | 0d |  | NDQ | 4h |
| 49 | 1.9.3 | comment design | 0.5d | 2015-08-31 08:00 | 2015-08-31 12:00 | 48 | 0d |  | Viettel | 4h |
| 50 | 1.9.4 | Redesign search and result page(out jpg) | 0.5d | 2015-08-31 13:00 | 2015-08-31 17:00 | 49 | 0d |  | NDQ | 4h |
| 51 | 1.9.5 | Cut htmt and buid css, js(out html) | 0.5d | 2015-09-01 08:00 | 2015-09-01 12:00 | 50 | 8.5d |  | NDQ | 4h |

| ID | WBS | Task | Duration | Start | Finish | Predecessors | Total slack | Resources | Work |
| --- | --- | --- | --- | --- | --- | --- | --- | --- | --- |
| 52 | 1.10 | **Design payment page** | 2.5d | 2015-09-01 08:00 | 2015-09-03 12:00 | 50 | 0d |  | 20h |
| 53 | 1.10.1 | Design payment page | 0.5d | 2015-09-01 08:00 | 2015-09-01 12:00 | 50 | 0d | NDQ | 4h |
| 54 | 1.10.2 | sent design for review | 0.5d | 2015-09-01 13:00 | 2015-09-01 17:00 | 53 | 0d | NDQ | 4h |
| 55 | 1.10.3 | comment design | 0.5d | 2015-09-02 08:00 | 2015-09-02 12:00 | 54 | 0d | Viettel | 4h |
| 56 | 1.10.4 | Redesign payment page(out jpg) | 0.5d | 2015-09-02 13:00 | 2015-09-02 17:00 | 55 | 0d | NDQ | 4h |
| 57 | 1.10.5 | Cut htmt and buid css, js(out html) | 0.5d | 2015-09-03 08:00 | 2015-09-03 12:00 | 56 | 6.5d | NDQ | 4h |
| 58 | 1.11 | **Design VOD** | 4d | 2015-09-03 08:00 | 2015-09-08 17:00 | 56 | 0d |  | 32h |
| 59 | 1.11.1 | Design VOD | 2d | 2015-09-03 08:00 | 2015-09-04 17:00 | 56 | 0d | NDQ | 16h |
| 60 | 1.11.2 | Sent design for review | 0.5d | 2015-09-07 08:00 | 2015-09-07 12:00 | 59 | 0d | NDQ | 4h |
| 61 | 1.11.3 | Comment design | 0.5d | 2015-09-07 13:00 | 2015-09-07 17:00 | 60 | 0d | Viettel | 4h |
| 62 | 1.11.4 | Redesign VOD(out jpg) | 0.5d | 2015-09-08 08:00 | 2015-09-08 12:00 | 61 | 0d | NDQ | 4h |
| 63 | 1.11.5 | Cut htmt and buid css, js(out html) | 0.5d | 2015-09-08 13:00 | 2015-09-08 17:00 | 62 | 3d | NDQ | 4h |
| 64 | 1.12 | **Design User managerment page** | 2.5d | 2015-09-08 13:00 | 2015-09-10 17:00 | 62 | 0d |  | 20h |
| 65 | 1.12.1 | Design User managerment page | 0.5d | 2015-09-08 13:00 | 2015-09-08 17:00 | 62 | 0d | NDQ | 4h |
| 66 | 1.12.2 | Sent design for review | 0.5d | 2015-09-09 08:00 | 2015-09-09 12:00 | 65 | 0d | NDQ | 4h |
| 67 | 1.12.3 | Comment design | 0.5d | 2015-09-09 13:00 | 2015-09-09 17:00 | 66 | 0d | Viettel | 4h |
| 68 | 1.12.4 | Redesign user managerment page(out jpg) | 0.5d | 2015-09-10 08:00 | 2015-09-10 12:00 | 67 | 0d | NDQ | 4h |
| 69 | 1.12.5 | Cut htmt and buid css, js(out html) | 0.5d | 2015-09-10 13:00 | 2015-09-10 17:00 | 68 | 0d | NDQ | 4h |
| 70 | 1.13 | **Pack and hand over** | 1d | 2015-09-11 08:00 | 2015-09-11 17:00 | 69 | 0d |  | 8h |
| 71 | 1.13.1 | Pack all file in project | 0.5d | 2015-09-11 08:00 | 2015-09-11 12:00 | 69 | 0d | NDQ | 4h |
| 72 | 1.13.2 | Hand over project | 0.5d | 2015-09-11 13:00 | 2015-09-11 17:00 | 71 | 0d | NDQ | 4h |
